# Предварительный план2007

Schedule from MS Project, 2013-04-22 to 2014-05-06, A marks actual dates.

## Calendars

- Стандартный: Mon-Fri 09:00-13:00, 14:00-18:00; Sat-Sun off. Exceptions (off unless hours are given): 2013-05-01 to 2013-05-05 (Первое мая), 2013-05-09 to 2013-05-12 (Девятое мая).

## Resources

| Resource |
| --- |
| Шилин Роман |
| Аналитик |
| Андрей Пирожков |
| Тугушев Илья |
| Денис Митавский |
| Алексей Львов |
| Андрей Карандей |
| Валерий Мацукевич |
| Java разработчик3 |
| Java разработчик4 |
| WEB-дизайнер |
| Влад Симоненко |
| Андрей Цветков |
| Java разработчик5 |
| Тест Аналитик |
| Java разработчик6 |
| Тестировщик |
| Технический писатель |
| Технолог - администратор |
| Технический писатель2 |
| Системный аналитик1 |
| Системный аналитик2 |
| Системный аналитик3 |
| Системный аналитик4 |
| Владимир Панов |
| Сергей Кашанский |
| Роман Митинков |
| Роман Болотов |
| Глеб Наздрачев |
| Евгения Капустина |
| Эдуард Михайлов |
| Тимофей Билый |

## Schedule

| ID | WBS | Task | Type | Duration | Start | Finish | Predecessors | Complete | Remaining | Total slack | Free slack | Constraint | Resources | Work | Actual work |
| --- | --- | --- | --- | --- | --- | --- | --- | --- | --- | --- | --- | --- | --- | --- | --- |
| 1 | 1 | **Разработка второй версии CM4/5** |  | 267d? | 2013-04-22 A | 2014-05-06 |  | 7% | 247.38d? | 0d |  |  |  | 26810.4h | 1463.54h |
| 2 | 1.1 | Принято решение о начале разработки | milestone | 0d | 2013-04-22 | 2013-04-22 |  |  |  | 0d |  | start no earlier than 2013-04-22 |  |  |  |
| 3 | 1.2 | Управление проектом |  | 267d | 2013-04-22 | 2014-05-06 | 2 |  |  | 0d |  |  | Шилин Роман | 2136h |  |
| 4 | 1.3 | **Управление требованиями** |  | 193d | 2013-05-27 A | 2014-02-19 | 2 | 6% | 181.71d | 54d |  |  | Аналитик | 3463.2h | 178.34h |
| 5 | 1.3.1 | Выделен аналитик на проект | milestone | 0d | 2013-05-27 A | 2013-05-27 A |  | 100% |  |  |  | start no earlier than 2013-05-27 |  |  |  |
| 6 | 1.3.2 | Формирование скоупа проекта _ верхний уровень |  | 15d | 2013-05-27 A | 2013-06-14 | 5 | 73% | 4d | 54d | 0d |  | Евгения Капустина | 120h | 88h |
| 7 | 1.3.3 | Скоуп на систему сформирован и утвержден | milestone | 0d | 2013-06-21 | 2013-06-21 | 6FS+5d |  |  | 54d | 0d |  |  |  |  |
| 8 | 1.3.4 | Сопровождение требований |  | 173d | 2013-06-24 | 2014-02-19 | 5, 7 |  |  | 54d |  |  | Эдуард Михайлов; Евгения Капустина [30%] | 1799.2h |  |
| 9 | 1.4 | **Создание модуля "Делопроизводство" (документоориентированная среда)** |  | 214d? | 2013-04-22 A | 2014-02-20 |  | 12% | 188.79d? | 53d |  |  |  | 14610.4h | 1285.2h |
| 10 | 1.4.1 | Первичные требования для создания модуля "Делопроизводство" подготовлены | milestone | 0d | 2013-04-22 | 2013-04-22 | 2 |  |  | 90.22d | 0d | finish no earlier than 2012-04-02 |  |  |  |
| 11 | 1.4.2 | **Апробация идей прототипа** |  | 24d | 2013-04-29 A | 2013-06-06 |  | 99% | 0d | 238d |  |  |  | 144h | 144h |
| 12 | 1.4.2.1 | Пирожков доступен | milestone | 0d | 2013-06-03 | 2013-06-03 |  |  |  | 242d |  | start no earlier than 2013-06-03 |  |  |  |
| 13 | 1.4.2.2 | Проведение предварительных испытаний системы |  | 9d | 2013-04-29 A | 2013-05-16 A | 10FS+5d | 100% |  |  |  |  | Андрей Цветков | 72h | 72h |
| 14 | 1.4.2.3 | Описание обработки ВХ. Док. На примере технологий прототипа |  | 9d | 2013-05-20 A | 2013-06-06 A |  | 100% |  |  |  | start no earlier than 2013-05-20 | Андрей Пирожков | 72h | 72h |
| 15 | 1.4.3 | **Настройка инфраструктуры** |  | 16d | 2013-05-20 A | 2013-06-10 | 23 | 58% | 6.67d | 70d | 0d |  |  | 96h | 56h |
| 16 | 1.4.3.1 | Настройка непрерывной интеграции |  | 4d | 2013-05-20 A | 2013-05-23 A |  | 100% |  |  |  |  | Тугушев Илья | 32h | 32h |
| 17 | 1.4.3.2 | Поддержка UNIT-тестирования и интеграционного тестирования на уроне среды непрерывной интеграции |  | 5d | 2013-06-04 | 2013-06-10 |  |  |  | 70d |  | start no earlier than 2013-06-04 | Тугушев Илья | 40h |  |
| 18 | 1.4.3.3 | Репакеджинг проекта |  | 3d | 2013-05-27 A | 2013-05-29 A |  | 100% |  |  |  | start no earlier than 2013-05-27 | Сергей Кашанский | 24h | 24h |
| 19 | 1.4.4 | **Проектирование и формирование ядра системы** |  | 131d? | 2013-04-22 A | 2013-10-28 | 10 | 17% | 108.78d? | 68d | 0d |  |  | 6278.4h | 845.2h |
| 20 | 1.4.4.1 | **Определение структуры модуля Делопроизводство** |  | 25d | 2013-04-22 A | 2013-05-31 A |  | 100% |  |  |  |  |  | 352h | 352h |
| 21 | 1.4.4.1.1 | Разбивка на слои |  | 5d | 2013-04-22 A | 2013-04-26 A |  | 100% |  |  |  |  | Денис Митавский [50%]; Андрей Пирожков [50%] | 40h | 40h |
| 22 | 1.4.4.1.2 | Конфигурации, загрузка и инициализация системы в базовой конфигурации |  | 5d | 2013-04-29 A | 2013-05-08 A | 21 | 100% |  |  |  |  | Валерий Мацукевич; Денис Митавский [50%] | 60h | 60h |
| 23 | 1.4.4.1.3 | Базовая конфигурация объектов системы |  | 5d | 2013-05-13 A | 2013-05-17 A | 21, 22 | 100% |  |  |  |  | Денис Митавский [50%]; Валерий Мацукевич | 60h | 60h |
| 24 | 1.4.4.1.4 | Юнит-тестирование - базис |  | 6d | 2013-05-17 A | 2013-05-24 A | 13 | 100% |  |  |  |  | Денис Митавский [50%]; Андрей Цветков | 72h | 72h |
| 25 | 1.4.4.1.5 | Базовая имплементация слоя DAO |  | 5d | 2013-05-20 A | 2013-05-24 A | 23 | 100% |  |  |  |  | Валерий Мацукевич | 40h | 40h |
| 26 | 1.4.4.1.6 | Обеспечение программных компонет верификации первой очереди |  | 5d | 2013-05-27 A | 2013-05-31 A | 25 | 100% |  |  |  |  | Валерий Мацукевич; Андрей Цветков | 80h | 80h |

Notes:
- 26: UNIT тестирование в рамках наработанного кода

| ID | WBS | Task | Type | Duration | Start | Finish | Predecessors | Complete | Remaining | Total slack | Free slack | Constraint | Resources | Work | Actual work |
| --- | --- | --- | --- | --- | --- | --- | --- | --- | --- | --- | --- | --- | --- | --- | --- |
| 27 | 1.4.4.2 | **DAO** |  | 35d? | 2013-06-03 A | 2013-07-19 | 25, 26 | 67% | 11.52d? | 139d |  |  |  | 224h | 147.2h |
| 28 | 1.4.4.2.1 | DAO для бизнес-объектов |  | 7d | 2013-06-03 A | 2013-06-11 A |  | 100% |  |  |  |  | Валерий Мацукевич | 56h | 56h |
| 29 | 1.4.4.2.2 | DAO для коллекций |  | 13d | 2013-06-12 A | 2013-07-04 | 28 | 69% | 4d | 114d | 0d |  | Андрей Цветков | 104h | 72h |
| 30 | 1.4.4.2.3 | Функционал системы готов для проведения проектирования интеграции с GUI СМ4 | milestone | 0d | 2013-06-24 A | 2013-06-24 A | 28, 29 | 100% |  |  |  |  |  |  |  |
| 31 | 1.4.4.2.4 | DAO - утилитарные поля |  | 6d | 2013-06-25 A | 2013-07-08 | 29 | 80% | 1.2d | 148.8d |  |  | Денис Митавский [50%] | 24h | 19.2h |
| 32 | 1.4.4.2.5 | DAO - кэш уровня транзакции |  | 5d? | 2013-07-15 | 2013-07-19 | 93 |  |  | 134d | 0d |  | Валерий Мацукевич | 40h |  |
| 33 | 1.4.4.3 | CRUD-сервис для бизнес-объектов |  | 10d | 2013-06-11 A | 2013-06-24 A | 29FF | 100% |  |  |  |  | Андрей Цветков | 80h | 80h |
| 34 | 1.4.4.4 | Поддержка отсортированных дочерних бизнес-объектов |  | 5d | 2013-07-22 | 2013-07-26 | 32 |  |  | 134d |  |  | Валерий Мацукевич | 40h |  |
| 35 | 1.4.4.5 | Настройка Datasources/Jaas сервера приложений средствами Maven |  | 2d | 2013-07-05 | 2013-07-08 | 29 |  |  | 148d |  |  | Андрей Цветков | 16h |  |
| 36 | 1.4.4.6 | Рефакторинг |  | 4d | 2013-07-03 A | 2013-07-08 A | 25 | 100% |  |  |  | start no earlier than 2013-07-03 | Валерий Мацукевич | 32h | 32h |
| 37 | 1.4.4.7 | **Встроенный GUI** |  | 35d | 2013-06-10 A | 2013-07-26 |  | 24% | 26.71d | 134d |  |  |  | 132h | 18h |
| 38 | 1.4.4.7.1 | Базис GUI |  | 5d | 2013-06-10 A | 2013-06-14 |  | 90% | 0.5d | 164d |  | start no earlier than 2013-06-10 | Денис Митавский [50%] | 20h | 18h |
| 39 | 1.4.4.7.2 | Стилистическая адаптация компонентов GUI |  | 14d | 2013-07-09 | 2013-07-26 |  |  |  | 36d | 0d | start no earlier than 2013-07-09 | Тимофей Билый | 112h |  |
| 40 | 1.4.4.8 | **Права доступа** |  | 27d | 2013-06-12 A | 2013-07-18 |  | 32% | 18.32d | 115d | 47d |  |  | 184h | 36h |
| 41 | 1.4.4.8.1 | Права - оптимизация хранения (проектирование) |  | 10d | 2013-06-12 A | 2013-06-25 | 28 | 90% | 1d | 121d | 3d |  | Андрей Пирожков [50%] | 40h | 36h |
| 42 | 1.4.4.8.2 | Описание существующими декларативными средствами конфигурации |  | 8d | 2013-07-01 | 2013-07-10 | 41, 29FF |  |  | 121d | 0d |  | Андрей Цветков | 64h |  |
| 43 | 1.4.4.8.3 | Автофильтрация |  | 10d | 2013-07-05 | 2013-07-18 | 41, 29 |  |  | 114d | 0d |  | Андрей Цветков | 80h |  |
| 44 | 1.4.4.9 | **Workflow - интеграция с Activiti** |  | 56d | 2013-06-07 A | 2013-08-23 | 14 | 10% | 50.4d | 36d | 0d |  |  | 280h | 12h |
| 45 | 1.4.4.9.1 | Проектирование |  | 10d | 2013-06-07 A | 2013-06-20 |  | 30% | 7d | 62d | 0d |  | Андрей Пирожков [50%] | 40h | 12h |
| 46 | 1.4.4.9.2 | Разработка |  | 20d | 2013-07-29 | 2013-08-23 | 45, 39 |  |  | 36d |  |  | Андрей Пирожков [50%]; Сергей Кашанский | 240h |  |
| 47 | 1.4.4.10 | Наследование/Аспекты |  | 20d | 2013-06-21 | 2013-07-18 | 45 |  |  | 130d |  |  | Андрей Пирожков [50%] | 80h |  |
| 48 | 1.4.4.11 | **Коллекции** |  | 26d | 2013-07-19 A | 2013-08-23 |  | 66% | 8.94d | 79d | 21d |  |  | 300h | 168h |
| 49 | 1.4.4.11.1 | Коллекции - конфигурация |  | 3d | 2013-07-19 A | 2013-07-23 A | 46 | 100% |  |  |  |  | Денис Митавский | 24h | 24h |
| 50 | 1.4.4.11.2 | DAO - язык запросов коллекций |  | 12d | 2013-07-24 A | 2013-08-08 A | 49 | 100% |  |  |  |  | Сергей Кашанский; Денис Митавский [50%] | 96h | 96h |
| 51 | 1.4.4.11.3 | Сервис получения и получения счетчиков |  | 6d | 2013-08-09 A | 2013-08-16 A | 49, 50 | 100% |  |  |  |  | Андрей Пирожков [50%]; Сергей Кашанский | 48h | 48h |
| 52 | 1.4.4.11.4 | ПКД |  | 11d | 2013-08-09 | 2013-08-23 | 50 |  |  | 79d | 0d |  | Андрей Пирожков [50%]; Сергей Кашанский | 132h |  |

Notes:
- 33: - проектирование базового API / - имплементация
- 34: Для отображени и поддержания заданного порядка следования объектов
- 38: (логин, основной экран)
- 39: Верстка
- 41: Права доступа - оптимизация подхода, / подбор других названий сущностей (таблицы) переименовать таблицы и улучшить производительность
- 42: Права доступа - описание существующими декларативными средствами конфигурации / (для автоматического создания таблиц) + / конфигурирование под-запроса для фильтрации - там же
- 43: Права доступа - авто-фильтрация / + "внедрение в под-запросы"
- 44: Задачи: / - модель процесса (BPMN) / - Имплементация WF - сервиса , взаимодействие системы с Аctiviti
- 47: Архитектура - форма хранения данных (с учетом производительности) / -требуется вернуться к обсуждению
- 50: DAO - язык запросов коллекций
- 51: Коллекции - сервис получения и получения счетчиков
- 52: Для поддержания реализации избранного, отметок о прочтении и т.д.

| ID | WBS | Task | Type | Duration | Start | Finish | Predecessors | Total slack | Free slack | Constraint | Resources | Work |
| --- | --- | --- | --- | --- | --- | --- | --- | --- | --- | --- | --- | --- |
| 53 | 1.4.4.12 | **Действия** |  | 18d | 2013-07-24 | 2013-08-16 |  | 70d |  |  |  | 184h |
| 54 | 1.4.4.12.1 | Концепция |  | 4d | 2013-07-24 | 2013-07-29 | 49 | 70d | 0d |  | Андрей Пирожков [50%] | 16h |
| 55 | 1.4.4.12.2 | Реализация |  | 14d | 2013-07-30 | 2013-08-16 | 54 | 70d | 0d |  | Роман Митинков; Андрей Пирожков [50%] | 168h |
| 56 | 1.4.4.13 | **Формы встроенного GUI** |  | 26d | 2013-07-19 | 2013-08-23 |  | 114d |  |  |  | 264h |
| 57 | 1.4.4.13.1 | Конфигурация |  | 6d | 2013-07-19 | 2013-07-26 | 43 | 114d | 0d |  | Денис Митавский [50%] | 24h |
| 58 | 1.4.4.13.2 | API, сервис получения |  | 6d | 2013-07-29 | 2013-08-05 | 57 | 114d | 0d |  | Денис Митавский [50%]; Валерий Мацукевич | 72h |
| 59 | 1.4.4.13.3 | DAO форм |  | 14d | 2013-08-06 | 2013-08-23 | 58 | 114d |  |  | Денис Митавский [50%]; Валерий Мацукевич | 168h |
| 60 | 1.4.4.14 | **Слой сопряжения GUI CM4** |  | 76d | 2013-06-25 | 2013-10-08 |  | 42d |  |  |  | 1021.6h |
| 61 | 1.4.4.14.1 | REST-протокол для АРМа - проектирование |  | 3d | 2013-06-25 | 2013-06-27 | 30 | 42d | 0d |  | Тугушев Илья; Денис Митавский [20%]; Андрей Пирожков [20%] | 33.6h |
| 62 | 1.4.4.14.2 | Проектиирование выполнено и ресурсы достуны | milestone | 0d | 2013-07-31 | 2013-07-31 |  | 19d |  | start no earlier than 2013-07-31 |  |  |
| 63 | 1.4.4.14.3 | Реализация коннекторов к платформе |  | 50d | 2013-07-31 | 2013-10-08 | 61, 62 | 19d | 0d |  | Тугушев Илья [33%]; Роман Болотов; Глеб Наздрачев | 932h |
| 64 | 1.4.4.14.4 | Сервис работы с вложениями |  | 7d | 2013-07-11 | 2013-07-19 | 25, 42 | 139d |  |  | Влад Симоненко | 56h |
| 65 | 1.4.4.15 | **Поиск** |  | 26d | 2013-07-29 | 2013-09-03 | 33 | 35d |  |  |  | 436h |
| 66 | 1.4.4.15.1 | Идея поиска овормлена | milestone | 0d | 2013-07-29 | 2013-07-29 |  | 35d | 0d | finish no earlier than 2013-07-29 |  |  |
| 67 | 1.4.4.15.2 | Поиск |  | 15d | 2013-07-30 | 2013-08-19 | 66 | 74d | 5d |  | Денис Митавский [50%]; Андрей Цветков | 180h |
| 68 | 1.4.4.15.3 | Полнотекстовый поиск |  | 20d | 2013-07-30 | 2013-08-26 | 66 | 68d | 0d |  | Влад Симоненко | 160h |
| 69 | 1.4.4.15.4 | Расширенный поиск |  | 6d | 2013-08-27 | 2013-09-03 | 67, 68 | 69d | 0d |  | Денис Митавский; Андрей Цветков | 96h |
| 70 | 1.4.4.16 | **Работа с отчетами** |  | 23d | 2013-08-26 | 2013-09-25 |  | 81d |  |  |  | 276h |
| 71 | 1.4.4.16.1 | JDBC-драйвер для системы построения отчётов |  | 8d | 2013-08-26 | 2013-09-04 | 52 | 81d | 0d |  | Денис Митавский [50%]; Андрей Цветков | 96h |
| 72 | 1.4.4.16.2 | Интеграция с Jasper Reports |  | 15d | 2013-09-05 | 2013-09-25 | 71 | 81d | 0d |  | Денис Митавский [50%]; Андрей Цветков | 180h |
| 73 | 1.4.4.17 | **Компоненты GUI** |  | 42d | 2013-08-27 | 2013-10-23 |  | 68d | 0d |  |  | 912.8h |
| 74 | 1.4.4.17.1 | GUI - архитектура активностей/дочерних активностей |  | 10d | 2013-08-27 | 2013-09-09 | 50, 68 | 68d | 0d |  | Денис Митавский [50%] | 40h |
| 75 | 1.4.4.17.2 | GUI - панель навигации |  | 10d | 2013-09-10 | 2013-09-23 | 52, 74 | 68d | 0d |  | Денис Митавский [50%]; Влад Симоненко | 120h |
| 76 | 1.4.4.17.3 | GUI - отображение коллекций активность |  | 10d | 2013-09-10 | 2013-09-23 | 74 | 91d |  |  | Тугушев Илья [33%]; Тимофей Билый | 106.4h |
| 77 | 1.4.4.17.4 | GUI - отображение отчётов |  | 8d | 2013-09-26 | 2013-10-07 | 74, 72 | 81d |  |  | Андрей Цветков | 64h |
| 78 | 1.4.4.17.5 | GUI - действия |  | 10d | 2013-09-10 | 2013-09-23 | 74 | 91d |  |  | Тугушев Илья [33%]; Глеб Наздрачев | 106.4h |
| 79 | 1.4.4.17.6 | GUI - конфигурируемые формы проектирование |  | 3d | 2013-09-04 | 2013-09-06 | 69 | 69d | 0d |  | Денис Митавский [50%] | 12h |
| 80 | 1.4.4.17.7 | GUI - конфигурируемые формы реализация |  | 8d | 2013-09-09 | 2013-09-18 | 79 | 69d | 0d |  | Андрей Карандей | 64h |
| 81 | 1.4.4.17.8 | GUI - виджеты разработка (базовый набор) |  | 25d | 2013-09-19 | 2013-10-23 | 80 | 69d |  |  | Тимофей Билый; Влад Симоненко | 400h |
| 82 | 1.4.4.18 | Тестирование производительности |  | 25d | 2013-09-24 | 2013-10-28 | 40, 33, 48, 75, 80 | 68d |  |  | Денис Митавский; Валерий Мацукевич | 400h |
| 83 | 1.4.4.19 | Версионность/аудит |  | 8d | 2013-08-19 | 2013-08-28 | 33, 55 | 70d | 0d |  | Сергей Кашанский | 64h |
| 84 | 1.4.4.20 | Блокировки бизнес-объектов |  | 6d | 2013-08-29 | 2013-09-05 | 83 | 70d | 0d |  | Сергей Кашанский | 48h |
| 85 | 1.4.4.21 | Описание структуры модуля Делопроизводство |  | 20d | 2013-07-30 | 2013-08-26 | 20, 15, 14, 66 | 35d | 0d |  | Владимир Панов | 160h |
| 86 | 1.4.4.22 | Уточнение состава и сроков работ |  | 2d | 2013-10-24 | 2013-10-25 | 73 | 69d |  |  | Андрей Пирожков; Денис Митавский; Тугушев Илья | 48h |
| 87 | 1.4.4.23 | Кросс-СУБД, поддержка Oracle |  | 15d | 2013-09-06 | 2013-09-26 | 84 | 70d | 0d |  | Роман Митинков | 120h |
| 88 | 1.4.4.24 | SQL-trace |  | 5d | 2013-09-27 | 2013-10-03 | 87 | 70d | 0d |  | Влад Симоненко | 40h |
| 89 | 1.4.4.25 | Локализация (на уровне конфигурации) |  | 15d | 2013-10-04 | 2013-10-24 | 88 | 70d |  |  | Влад Симоненко | 120h |

Notes:
- 59: получение форм
- 63: Начальная реализация модуля "документооборот" - замена лотуса
- 68: Включая взаимодействие с Solr
- 69: C учетом релевантности и оптимизации по объедененеию поисков аттрибутивного и полнотекстового
- 71: Используя язык запросов коллеций
- 75: Отображение и конфигурация + API для получения
- 76: отображающая коллекцию должна иметь возможность быть сконфигурированной так, чтобы мэппить значения некоторых колонок в картинки
- 82: - полноценное, продуманное, конфигурируемое, полностью автоматизированное (вплоть до промежуточного сбора статистики в СУБД перед запуском тестов производительности) с автоматической генерацией таблиц и графиков, с поддержкой нагружающих потоков и т.п.
- 83: История модификации объекта / Версионность - на бизнес слой
- 87: Кросс-СУБД, поддержка Oracle
- 89: Поддержка ресурсных файлов - в расках конфигурирования ресурсных файлов / Подмена языка в интерфейсе (передача локали пользоввателю) -

| ID | WBS | Task | Duration | Start | Finish | Predecessors | Complete | Remaining | Total slack | Free slack | Resources | Work | Actual work |
| --- | --- | --- | --- | --- | --- | --- | --- | --- | --- | --- | --- | --- | --- |
| 90 | 1.4.4.26 | **Интеграция с системой управления учетными записями** | 14d | 2013-09-06 | 2013-09-25 | 84 |  |  | 91d |  |  | 56h |  |
| 91 | 1.4.4.26.1 | Интеграция с ActiveDirectory | 14d | 2013-09-06 | 2013-09-25 |  |  |  | 91d |  | Андрей Пирожков [50%] | 56h |  |
| 92 | 1.4.4.27 | **Расширение функций сервиса конфигурации** | 20d | 2013-07-09 | 2013-08-05 |  |  |  | 113d |  |  | 288h |  |
| 93 | 1.4.4.27.1 | Расширяемость конфигурации | 4d | 2013-07-09 | 2013-07-12 | 36 |  |  | 113d | 0d | Валерий Мацукевич | 32h |  |
| 94 | 1.4.4.27.2 | Изменение и дополнение конфигурации системы | 16d | 2013-07-15 | 2013-08-05 | 93 |  |  | 113d |  | Андрей Пирожков; Роман Митинков | 256h |  |
| 95 | 1.4.4.28 | **Сервис для работы с системным журналом** | 15d | 2013-08-06 | 2013-08-26 | 94 |  |  | 113d |  |  | 120h |  |
| 96 | 1.4.4.28.1 | Ведение журнала действий пользователей и действий с объектами системы | 10d | 2013-08-06 | 2013-08-19 |  |  |  | 113d | 0d | Андрей Карандей | 80h |  |
| 97 | 1.4.4.28.2 | Настройка уровня логирования | 5d | 2013-08-20 | 2013-08-26 | 96 |  |  | 113d |  | Андрей Карандей | 40h |  |
| 98 | 1.4.5 | **Разработка** | 139d | 2013-06-11 A | 2013-12-20 | 15 | 5% | 132.44d | 97d |  |  | 4908h | 240h |
| 99 | 1.4.5.1 | Контроль и корректировка технических решений "Архитектурный комитет" | 139d | 2013-06-11 A | 2013-12-20 |  | 14% | 119d | 97d |  | Тугушев Илья [20%]; Андрей Пирожков [20%]; Денис Митавский [20%]; WEB-дизайнер [20%]; Аналитик [20%]; Владимир Панов [50%] | 1668h | 240h |
| 100 | 1.4.5.2 | **Разработка серверной логики модуля Делопроизводство** | 40d | 2013-08-27 | 2013-10-21 | 15, 44, 85 |  |  | 35d |  |  | 1280h |  |
| 101 | 1.4.5.2.1 | Разработка схем документов модуля Делопроизводство | 20d | 2013-08-27 | 2013-09-23 |  |  |  | 35d | 0d | Андрей Пирожков [50%]; Влад Симоненко | 240h |  |
| 102 | 1.4.5.2.2 | Разработка ЖЦ процессов модуля (WF) | 20d | 2013-09-24 | 2013-10-21 | 101 |  |  | 53d | 0d | Влад Симоненко; Андрей Пирожков [50%] | 240h |  |
| 103 | 1.4.5.2.3 | Разработка логики бизнес- действий модуля "Делопроизводство" | 40d | 2013-08-27 | 2013-10-21 |  |  |  | 53d | 0d | Алексей Львов; Андрей Пирожков [50%] | 480h |  |
| 104 | 1.4.5.2.4 | Разработка процессов автоматизации для модуля "Делопроизводство" | 20d | 2013-08-27 | 2013-09-23 |  |  |  | 161d |  | Андрей Карандей | 160h |  |
| 105 | 1.4.5.2.5 | Разработка модели прав доступа (контекстные роли) | 20d | 2013-09-24 | 2013-10-21 | 101 |  |  | 141d |  | Андрей Карандей | 160h |  |
| 106 | 1.4.5.3 | **Разработка клиентской логики модуля "Делопроизводство"** | 10d | 2013-10-09 | 2013-10-22 | 63 |  |  | 19d | 0d |  | 160h |  |
| 107 | 1.4.5.3.1 | Разработка форм для работы с документами в GUI (настройки форм) | 5d | 2013-10-09 | 2013-10-15 |  |  |  | 19d | 0d | Java разработчик3 | 40h |  |
| 108 | 1.4.5.3.2 | Разработка структуры рабочего места | 5d | 2013-10-16 | 2013-10-22 | 101, 107 |  |  | 19d |  | Java разработчик3 | 40h |  |
| 109 | 1.4.5.3.3 | Разработка специфичных для модуля форм элементов GUI | 10d | 2013-10-09 | 2013-10-22 |  |  |  | 19d |  | Java разработчик4 | 80h |  |
| 110 | 1.4.5.4 | **Подготовка работы со списками значений** | 40d | 2013-10-23 | 2013-12-17 |  |  |  | 100d |  |  | 640h |  |
| 111 | 1.4.5.4.1 | Разработка функционала учета организационно штатной структуры | 40d | 2013-10-23 | 2013-12-17 | 106 |  |  | 100d |  | Андрей Цветков | 320h |  |
| 112 | 1.4.5.4.2 | Разработка функционала с рубрикаторами (сложные справочники) | 20d | 2013-10-23 | 2013-11-19 | 106 |  |  | 100d | 0d | Валерий Мацукевич | 160h |  |
| 113 | 1.4.5.4.3 | Разработка функционала для работы с словарями данных (простые, линейные справочники) | 20d | 2013-11-20 | 2013-12-17 | 112 |  |  | 100d |  | Валерий Мацукевич | 160h |  |
| 114 | 1.4.5.5 | Подготовка отчетов | 40d | 2013-10-22 | 2013-12-16 | 101, 103, 102 |  |  | 53d | 0d | Влад Симоненко; Алексей Львов; Андрей Карандей | 960h |  |
| 115 | 1.4.5.6 | Сопряжение с мобильным клиентом СМ4 | 25d | 2013-10-23 | 2013-11-26 | 106 |  |  | 115d |  | Java разработчик3 | 200h |  |

Notes:
- 95: Сервис для работы с системным журналомВедение журнала действий пользователей и действий с объектами системы
- 96: Ведение журнала действий пользователей и действий с объектами системы

| ID | WBS | Task | Type | Duration | Start | Finish | Predecessors | Total slack | Free slack | Constraint | Resources | Work |
| --- | --- | --- | --- | --- | --- | --- | --- | --- | --- | --- | --- | --- |
| 116 | 1.4.6 | **Тестирование** |  | 83d? | 2013-10-29 | 2014-02-20 | 19 | 53d | 0d |  |  | 2544h |
| 117 | 1.4.6.1 | **Функциональное тестирование** |  | 68d? | 2013-10-29 | 2014-01-30 |  | 68d |  |  |  | 2224h |
| 118 | 1.4.6.1.1 | Подготовка ПМИ |  | 5d | 2013-10-29 | 2013-11-04 |  | 68d | 0d |  | Тест Аналитик | 40h |
| 119 | 1.4.6.1.2 | Разработка "сценариев тестирования" |  | 15d | 2013-10-29 | 2013-11-18 |  | 73d | 14d |  | Тест Аналитик | 120h |
| 120 | 1.4.6.1.3 | Разработка модели нагрузки для тестирования |  | 10d | 2013-11-05 | 2013-11-18 | 118 | 73d | 14d |  | Тест Аналитик | 80h |
| 121 | 1.4.6.1.4 | Адаптация автоматизированных сценариев от СМ4 для создания нагрузки |  | 25d | 2013-11-05 | 2013-12-09 | 118 | 68d | 14d |  | Влад Симоненко | 200h |
| 122 | 1.4.6.1.5 | **Проведение тестирования** |  | 38d? | 2013-12-10 | 2014-01-30 | 119, 120 | 58d | 0d |  |  | 1784h |
| 123 | 1.4.6.1.5.1 | **Подготовка среды тестирования** |  | 15d? | 2013-12-10 | 2013-12-30 |  | 58d |  |  |  | 200h |
| 124 | 1.4.6.1.5.1.1 | Разворачивание системы |  | 5d? | 2013-12-10 | 2013-12-17 | 126SF | 101d | 0d |  | Влад Симоненко | 40h |
| 125 | 1.4.6.1.5.1.2 | Система готова для подключения инструментов мониторинга | milestone | 0d | 2013-12-17 | 2013-12-17 | 124 | 101d |  |  |  |  |
| 126 | 1.4.6.1.5.1.3 | Наполнение данными |  | 10d? | 2013-12-17 | 2013-12-30 | 114 | 53d | 0d |  | Влад Симоненко; Java разработчик6 | 160h |
| 127 | 1.4.6.1.5.2 | Среда тестирования готова | milestone | 0d | 2013-12-30 | 2013-12-30 | 126, 121 | 53d | 0d | start no earlier than 2012-05-24 |  |  |
| 128 | 1.4.6.1.5.3 | Проведение тестирования |  | 10d | 2013-12-31 | 2014-01-13 | 127 | 53d | 0d |  | Тест Аналитик; Тестировщик [200%] | 240h |
| 129 | 1.4.6.1.5.4 | **Обработка результатов тестирования и внесение изменений в модуль** |  | 15d | 2014-01-10 | 2014-01-30 | 128FS-2d | 53d |  |  |  | 1344h |
| 130 | 1.4.6.1.5.4.1 | Устранение замечаний по результатам функционального тестирования |  | 15d | 2014-01-10 | 2014-01-30 |  | 53d | 0d |  | Java разработчик5; Влад Симоненко [300%]; Валерий Мацукевич; Java разработчик3; Java разработчик4; Андрей Карандей; Алексей Львов; Андрей Цветков | 1200h |
| 131 | 1.4.6.1.5.4.2 | Проверка устранения замечаний |  | 6d | 2014-01-23 | 2014-01-30 | 130FS-6d | 53d | 0d |  | Тест Аналитик; Тестировщик [200%] | 144h |
| 132 | 1.4.6.2 | **Нагрузочное тестирование** |  | 28d | 2014-01-13 | 2014-02-20 | 118 | 53d |  |  |  | 320h |
| 133 | 1.4.6.2.1 | Стенд для нагрузочного тестирования подготовлен | milestone | 0d | 2014-01-13 | 2014-01-13 | 128 | 66d | 13d | finish no earlier than 2012-06-09 |  |  |
| 134 | 1.4.6.2.2 | Проведения нагрузочного тестирования |  | 10d | 2014-01-31 | 2014-02-13 | 131, 121, 133 | 53d | 0d |  | Влад Симоненко; Тест Аналитик; Тестировщик | 240h |
| 135 | 1.4.6.2.3 | Обработка результатов нагрузочного тестирования |  | 5d | 2014-02-14 | 2014-02-20 | 134 | 53d |  |  | Тест Аналитик; Тестировщик | 80h |
| 136 | 1.4.7 | Разработка модуля "Делопроизводство" завершена | milestone | 0d | 2014-02-20 | 2014-02-20 | 116 | 53d |  |  |  |  |
| 137 | 1.4.8 | **Подготовка документации** |  | 80d | 2013-10-29 | 2014-02-17 | 116SS | 56d |  |  |  | 640h |
| 138 | 1.4.8.1 | Разработка документа "Концепция системы " |  | 40d | 2013-10-29 | 2013-12-23 |  | 56d | 0d |  | Владимир Панов | 320h |
| 139 | 1.4.8.2 | Разработка "Software Architecture Document" |  | 40d | 2013-12-24 | 2014-02-17 | 138 | 56d | 0d |  | Владимир Панов | 320h |
| 140 | 1.4.8.3 | Документы подготовлены | milestone | 0d | 2014-02-17 | 2014-02-17 | 139 | 56d |  |  |  |  |

| ID | WBS | Task | Type | Duration | Start | Finish | Predecessors | Total slack | Free slack | Constraint | Resources | Work |
| --- | --- | --- | --- | --- | --- | --- | --- | --- | --- | --- | --- | --- |
| 141 | 1.5 | **Проверка работоспособности решения - Организация демонстрации** |  | 25d? | 2013-12-10 | 2014-01-13 | 122SS | 81d |  |  |  | 448h |
| 142 | 1.5.1 | Подготовка стенда |  | 3d | 2013-12-10 | 2013-12-12 | 143SF | 103d |  |  | Влад Симоненко; Аналитик | 48h |
| 143 | 1.5.2 | Подготовка прототипа |  | 20d? | 2013-12-10 | 2014-01-06 |  | 81d | 0d |  | Влад Симоненко; Аналитик | 320h |
| 144 | 1.5.3 | Проведение демонстраций |  | 3d | 2014-01-07 | 2014-01-09 | 143 | 81d | 0d |  | Влад Симоненко; Аналитик | 48h |
| 145 | 1.5.4 | Анализ результатов - выводы |  | 2d | 2014-01-10 | 2014-01-13 | 144 | 81d |  |  | Влад Симоненко; Аналитик | 32h |
| 146 | 1.6 | **Создание модулей первой очереди** |  | 111d? | 2013-11-05 | 2014-04-09 |  | 19d |  |  |  | 6152.8h |
| 147 | 1.6.1 | Определен состав модулей первой очереди и первичные требования подготовлены | milestone | 0d | 2013-11-05 | 2013-11-05 | 106FS+10d | 19d | 0d | finish no earlier than 2012-04-02 |  |  |
| 148 | 1.6.2 | **Проектирование** |  | 18.33d | 2013-11-06 | 2013-12-02 | 147 | 19d | 0d |  |  | 480h |
| 149 | 1.6.2.1 | Определение структуры модулей первой очереди |  | 13d | 2013-11-06 | 2013-11-22 |  | 19d | 0d |  | Андрей Пирожков; Тугушев Илья; Денис Митавский; WEB-дизайнер | 416h |
| 150 | 1.6.2.2 | Уточнение состава и сроков работ |  | 5.33d | 2013-11-25 | 2013-12-02 | 149 | 33.67d |  |  | Тугушев Илья [50%]; Андрей Пирожков [50%]; Денис Митавский [50%] | 64h |
| 151 | 1.6.3 | Принято решение о разработке модулей второй очереди | milestone | 0d | 2013-11-22 | 2013-11-22 | 149 | 19d | 0d | finish no earlier than 2012-05-21 |  |  |
| 152 | 1.6.4 | **Разработка** |  | 40d | 2013-11-25 | 2014-01-17 | 151 | 19d |  |  |  | 2864.8h |
| 153 | 1.6.4.1 | Контроль и корректировка технических решений "Архитектурный комитет" |  | 37d | 2013-11-25 | 2014-01-14 |  | 80d |  |  | Тугушев Илья [10%]; Андрей Пирожков [10%]; Денис Митавский [10%]; WEB-дизайнер | 384.8h |
| 154 | 1.6.4.2 | **Разработка серверной логики модулей первой очереди** |  | 40d | 2013-11-25 | 2014-01-17 |  | 19d | 0d |  |  | 1600h |
| 155 | 1.6.4.2.1 | Разработка схем документов для модулей первой очереди |  | 20d | 2013-11-25 | 2013-12-20 |  | 19d | 0d |  | Андрей Карандей; Влад Симоненко | 320h |
| 156 | 1.6.4.2.2 | Разработка ЖЦ процессов (WF) |  | 20d | 2013-12-23 | 2014-01-17 | 155 | 19d |  |  | Андрей Карандей; Влад Симоненко | 320h |
| 157 | 1.6.4.2.3 | Разработка логики бизнес- действий для модулей первой очереди |  | 40d | 2013-11-25 | 2014-01-17 |  | 19d |  |  | Алексей Львов; Влад Симоненко | 640h |
| 158 | 1.6.4.2.4 | Разработка процессов автоматизации для модулей первой очереди |  | 20d | 2013-11-25 | 2013-12-20 |  | 39d |  |  | Влад Симоненко | 160h |
| 159 | 1.6.4.2.5 | Разработка модели прав доступа (контекстные роли) |  | 20d | 2013-12-23 | 2014-01-17 | 155 | 19d |  |  | Влад Симоненко | 160h |
| 160 | 1.6.4.3 | **Разработка клиентской логики модулей первой очереди** |  | 30d | 2013-11-25 | 2014-01-03 |  | 29d | 10d |  |  | 320h |
| 161 | 1.6.4.3.1 | Разработка форм для работы с документами в GUI (настройки форм) |  | 10d | 2013-11-25 | 2013-12-06 |  | 49d |  |  | Java разработчик3 | 80h |
| 162 | 1.6.4.3.2 | Разработка структуры рабочего места |  | 10d | 2013-12-23 | 2014-01-03 | 155 | 29d |  |  | Java разработчик3 | 80h |
| 163 | 1.6.4.3.3 | Разработка специфичных для модуля форм элементов GUI |  | 20d | 2013-11-25 | 2013-12-20 |  | 39d |  |  | Java разработчик4 | 160h |
| 164 | 1.6.4.4 | **Разработка вспомогательного инструментария** |  | 20d | 2013-12-02 | 2013-12-30 |  | 33.67d | 14.67d |  |  | 400h |
| 165 | 1.6.4.4.1 | Построитель форм |  | 10d | 2013-12-02 | 2013-12-16 | 148 | 43.67d |  |  | Андрей Цветков | 80h |
| 166 | 1.6.4.4.2 | Разработка инсталлятора |  | 20d | 2013-12-02 | 2013-12-30 | 148 | 33.67d |  |  | Валерий Мацукевич | 160h |
| 167 | 1.6.4.4.3 | Разработка конфигуратора |  | 10d | 2013-12-02 | 2013-12-16 | 148 | 43.67d |  |  | Java разработчик5; Влад Симоненко | 160h |
| 168 | 1.6.4.5 | Подготовка отчетов |  | 20d | 2013-11-25 | 2013-12-20 |  | 97d |  |  | Влад Симоненко | 160h |
| 169 | 1.6.5 | Сборка модулей первой очереди завершена | milestone | 0d | 2014-01-17 | 2014-01-17 | 154, 160, 164 | 19d | 0d |  |  |  |

| ID | WBS | Task | Type | Duration | Start | Finish | Predecessors | Total slack | Free slack | Constraint | Resources | Work |
| --- | --- | --- | --- | --- | --- | --- | --- | --- | --- | --- | --- | --- |
| 170 | 1.6.6 | **Тестирование** |  | 58d? | 2014-01-20 | 2014-04-09 | 169 | 19d | 0d |  |  | 2648h |
| 171 | 1.6.6.1 | **Функциональное тестирование** |  | 38d? | 2014-01-20 | 2014-03-12 |  | 19d |  |  |  | 2024h |
| 172 | 1.6.6.1.1 | Подготовка ПМИ |  | 5d | 2014-01-20 | 2014-01-24 |  | 19d | 0d |  | Тест Аналитик | 40h |
| 173 | 1.6.6.1.2 | Разработка "сценариев тестирования" |  | 15d | 2014-01-20 | 2014-02-07 |  | 24d | 0d |  | Тест Аналитик | 120h |
| 174 | 1.6.6.1.3 | Разработка модели нагрузки для тестирования |  | 10d | 2014-01-27 | 2014-02-07 | 172 | 62d |  |  | Тест Аналитик | 80h |
| 175 | 1.6.6.1.4 | **Проведение тестирования** |  | 38d? | 2014-01-20 | 2014-03-12 |  | 24d |  |  |  | 1784h |
| 176 | 1.6.6.1.4.1 | **Подготовка среды тестирования** |  | 15d? | 2014-01-20 | 2014-02-07 |  | 24d |  |  |  | 200h |
| 177 | 1.6.6.1.4.1.1 | Разворачивание системы |  | 5d? | 2014-01-20 | 2014-01-24 |  | 24d | 0d |  | Влад Симоненко | 40h |
| 178 | 1.6.6.1.4.1.2 | Наполнение данными |  | 10d? | 2014-01-27 | 2014-02-07 | 177 | 24d | 0d |  | Влад Симоненко; Java разработчик6 | 160h |
| 179 | 1.6.6.1.4.2 | Среда тестирования готова | milestone | 0d | 2014-02-07 | 2014-02-07 | 173, 178 | 24d | 0d | finish no earlier than 2012-06-09 |  |  |
| 180 | 1.6.6.1.4.3 | Проведение тестирования |  | 10d | 2014-02-10 | 2014-02-21 | 179 | 24d | 0d |  | Тест Аналитик; Тестировщик [200%] | 240h |
| 181 | 1.6.6.1.4.4 | **Обработка результатов тестирования и внесение изменений в модуль** |  | 15d | 2014-02-20 | 2014-03-12 | 169, 180FS-2d | 24d |  |  |  | 1344h |
| 182 | 1.6.6.1.4.4.1 | Устранение замечаний по результатам функционального тестирования |  | 15d | 2014-02-20 | 2014-03-12 |  | 24d | 0d |  | Java разработчик5; Влад Симоненко [300%]; Валерий Мацукевич; Java разработчик3; Java разработчик4; Андрей Карандей; Алексей Львов; Андрей Цветков | 1200h |
| 183 | 1.6.6.1.4.4.2 | Проверка устранения замечаний |  | 6d | 2014-03-05 | 2014-03-12 | 182FS-6d | 24d | 0d |  | Тест Аналитик; Тестировщик [200%] | 144h |
| 184 | 1.6.6.2 | **Нагрузочное тестирование** |  | 53d | 2014-01-27 | 2014-04-09 | 172 | 19d |  |  |  | 624h |
| 185 | 1.6.6.2.1 | Подготовка автоматизированных сценариев для создания нагрузки |  | 38d | 2014-01-27 | 2014-03-19 |  | 19d | 0d |  | Влад Симоненко | 304h |
| 186 | 1.6.6.2.2 | Стенд для нагрузочного тестирования подготовлен | milestone | 0d | 2014-02-21 | 2014-02-21 | 180 | 37d | 18d | finish no earlier than 2012-06-09 |  |  |
| 187 | 1.6.6.2.3 | Проведения нагрузочного тестирования |  | 10d | 2014-03-20 | 2014-04-02 | 183, 185, 186 | 19d | 0d |  | Влад Симоненко; Тест Аналитик; Тестировщик | 240h |
| 188 | 1.6.6.2.4 | Обработка результатов нагрузочного тестирования |  | 5d | 2014-04-03 | 2014-04-09 | 187 | 19d |  |  | Тест Аналитик; Тестировщик | 80h |
| 189 | 1.6.7 | Разработка модулей первой очереди завершена | milestone | 0d | 2014-04-09 | 2014-04-09 | 170 | 19d |  |  |  |  |
| 190 | 1.6.8 | **Подготовка документации** |  | 38d? | 2014-01-20 | 2014-03-12 | 170SS | 39d |  |  |  | 160h |
| 191 | 1.6.8.1 | Разработка "Software Architecture Document" для модулей первой очереди |  | 20d | 2014-01-20 | 2014-02-14 |  | 57d | 18d |  | Технический писатель | 160h |
| 192 | 1.6.8.2 | Документы подготовлены | milestone | 0d | 2014-03-12 | 2014-03-12 | 183, 191 | 39d |  |  |  |  |
